How a schedule from an exported table changed from version to version. A marks actual dates.

## Version 1 (saved 2026-10-13)

Note of the change: chore: establish graduation project baseline before system development

| ID | Task | Start | Finish |
| --- | --- | --- | --- |
| T01 | Scope and success criteria | 5 | 6 |
| T02 | Literature review | 5 | 10 |
| T03 | Sample audit and permissions | 5 | 7 |
| T04 | Proposal and supervisor review | 7 | 7 |
| T05 | Reproduce reference baseline | 8 | 9 |
| T06 | Curate corpus and build index | 8 | 11 |
| T07 | Author and check benchmark | 9 | 11 |
| T08 | Implement edition handling | 12 | 13 |
| T09 | Implement evidence checks | 13 | 14 |
| T10 | Follow-ups and integration | 14 | 15 |
| T11 | Development-only tuning and freeze | 15 | 16 |
| T12 | Controlled evaluation and analysis | 17 | 19 |
| T13 | Report and outcome evidence | 20 | 22 |
| T14 | Video and submission preparation | 22 | 23 |
| T15 | Final review and submission | 23 | 24 |
| T16 | Journals reviews and supervision | 5 | 24 |
| T17 | Viva preparation and defence | 25 | 27 |

## Version 2 (saved 2026-10-13)

Note of the change: docs: complete IEEE proposal and weekly schedule with holiday break

Added:

| ID | Task | Start | Finish |
| --- | --- | --- | --- |
| T18 | Symposium preparation and attendance | 17 | 18 |

Changed:

| ID | Task | Start | Finish | Other |
| --- | --- | --- | --- | --- |
| T05 | Verify baseline and embedding access |  |  | was named Reproduce reference baseline |
| T07 | Author and check benchmark | 9 → 14 | 11 → 16 |  |
| T08 | Refine and verify edition handling | 12 → 14 | 13 → 15 | was named Implement edition handling |
| T09 | Refine and verify evidence checks | 13 → 14 | 14 → 15 | was named Implement evidence checks |
| T10 | Follow-ups and integration | 14 → 16 | 15 → 16 |  |
| T11 | Development-only tuning and freeze | 15 → 17 | 16 → 17 |  |
| T12 | Controlled evaluation and analysis | 17 → 18 | 19 → 20 |  |
| T13 | Report and outcome evidence | 20 → 21 |  |  |

## Version 3 (saved 2026-10-14)

Note of the change: docs: finalize IEEE proposal and remove superseded drafts

Changed:

| ID | Task | Start | Finish | Other |
| --- | --- | --- | --- | --- |
| T03 | Sample audit and permissions |  | 7 → 6 |  |
| T04 | Proposal drafting review and submission | 7 → 6 | 7 → 8 | was named Proposal and supervisor review |
| T05 | Verify baseline and embedding access | 8 → 9 | 9 → 10 |  |
| T06 | Curate corpus and build index | 8 → 9 |  |  |
| T07 | Author and check benchmark | 14 → 12 |  |  |
| T08 | Refine and verify edition handling | 14 → 12 |  |  |
| T09 | Refine and verify evidence checks | 14 → 12 |  |  |
| T13 | Report and outcome evidence | 21 → 20 | 22 → 21 |  |
| T14 | Video and submission preparation | 22 → 21 | 23 → 21 |  |
| T15 | Final review and submission | 23 → 24 |  |  |
